# Demo Data Centre Fit-Out

Schedule from Primavera P6, 2026-01-21 to 2026-08-24, data date 2026-03-02, A marks actual dates.

## Calendars

- Standard 5-Day: Mon-Fri 08:00-16:00; Sat-Sun off. Exceptions (off unless hours are given): 2026-04-03, 2026-05-01, 2026-06-10 08:00-16:00.

## Schedule

| ID | WBS | Activity | Type | Duration | Start | Finish | Predecessors | Complete | Remaining | Total float | Free float | Constraint |
| --- | --- | --- | --- | --- | --- | --- | --- | --- | --- | --- | --- | --- |
|  | MS | **Project Milestones** |  |  | 2026-01-21 | 2026-08-24 |  |  |  |  |  |  |
| MS-010 |  | Notice to Proceed |  | 0d | 2026-01-21 A | 2026-01-21 A |  | 100% |  |  |  |  |
| MS-020 |  | Power-on | milestone | 0d | 2026-07-28 | 2026-07-28 | CX-030 |  |  | 0d |  |  |
| MS-030 |  | Practical Completion | milestone | 0d | 2026-08-24 | 2026-08-24 | CX-040 |  |  | 0d |  | finish on or before 2026-08-19 |
|  | EW | **Enabling Works** |  |  | 2026-01-21 | 2026-02-28 |  |  |  |  |  |  |
| EW-010 |  | Site establishment & hoarding |  | 10d | 2026-01-21 A | 2026-01-31 A | MS-010 | 100% |  |  |  |  |
| EW-020 |  | Strip-out of existing services |  | 15d | 2026-01-31 A | 2026-02-15 A | EW-010 | 100% |  |  |  |  |
| EW-030 |  | Builders-work openings |  | 10d | 2026-02-18 A | 2026-02-28 | EW-020 | 60% | 4d | 10d | 0d |  |
|  | ST | **Structure & Envelope** |  |  | 2026-02-22 | 2026-04-04 |  |  |  |  |  |  |
| ST-010 |  | Structural steel platform |  | 20d | 2026-02-22 A | 2026-03-14 | EW-030 | 30% | 14d | 0d |  |  |
| ST-020 |  | Roof penetrations & weatherproofing |  | 10d | 2026-03-16 | 2026-03-26 | ST-010 |  |  | 0d |  |  |
| ST-030 |  | Plant deck screed |  | 5d | 2026-03-30 | 2026-04-04 | ST-020 |  |  | 0d |  |  |
|  | MEP | **MEP Installation** |  |  | 2026-02-10 | 2026-06-25 |  |  |  |  |  |  |
| MEP-010 |  | Chiller procurement (16-wk lead) |  | 80d | 2026-02-10 A | 2026-05-01 |  | 25% | 60d | 10d | 0d |  |
| MEP-020 |  | CRAC unit procurement |  | 60d | 2026-03-02 | 2026-05-01 |  |  |  | 10d | 0d |  |
| MEP-030 |  | Pipework first fix |  | 20d | 2026-04-06 | 2026-04-26 | ST-010 FS+5d |  |  | 10d | 0d |  |
| MEP-040 |  | Electrical containment |  | 15d | 2026-04-06 | 2026-04-21 | ST-010 FS+5d |  |  | 10d | 0d |  |
| MEP-070 |  | LV switchboard installation |  | 15d | 2026-04-26 | 2026-05-11 | MEP-040 |  |  | 10d | 0d |  |
| MEP-060 |  | CRAC installation |  | 10d | 2026-05-03 | 2026-05-13 | MEP-020, MEP-030 |  |  | 10d | 0d |  |
| MEP-080 |  | Cabling & terminations |  | 25d | 2026-05-13 | 2026-06-07 | MEP-060 SS+5d, MEP-070 |  |  | 10d | 0d |  |
| MEP-050 |  | Chiller installation & rigging |  | 10d | 2026-06-15 | 2026-06-25 | ST-030, MEP-010 |  |  | 0d |  |  |
|  | FIT | **Fit-Out & Finishes** |  |  | 2026-04-13 | 2026-05-31 |  |  |  |  |  |  |
| FIT-010 |  | Raised access floor |  | 15d | 2026-04-13 | 2026-04-28 | EW-030 |  |  | 10d | 0d |  |
| FIT-020 |  | Partitions & fire-stopping |  | 20d | 2026-04-21 | 2026-05-11 | FIT-010 SS+5d |  |  | 10d | 0d |  |
| FIT-030 |  | Ceilings & finishes |  | 15d | 2026-05-16 | 2026-05-31 | FIT-020 |  |  | 10d | 0d |  |

| ID | WBS | Activity | Duration | Start | Finish | Predecessors | Total float | Free float | Constraint |
| --- | --- | --- | --- | --- | --- | --- | --- | --- | --- |
|  | CX | **Commissioning** |  | 2026-06-28 | 2026-08-19 |  |  |  |  |
| CX-010 |  | Pre-commissioning inspections | 10d | 2026-06-28 | 2026-07-08 | MEP-050, MEP-080, FIT-030 | 0d |  |  |
| CX-020 |  | L3 component commissioning | 15d | 2026-07-08 | 2026-07-23 | CX-010 | 0d |  |  |
| CX-030 |  | L4 integrated systems test | 10d | 2026-07-28 | 2026-08-07 | CX-020 | 0d |  |  |
| CX-040 |  | L5 IST & client witness | 10d | 2026-08-09 | 2026-08-19 | CX-030 | -1d | 0d | finish on or before 2026-08-21 |
